# Hospital construction building

How a schedule from Primavera P6 changed from version to version. A marks actual dates.

## Version 1 (data date 2025-01-01, saved 2026-09-21, file 02_Resource_Loading_HCB.xer)

| ID | WBS | Task | Duration | Start | Finish | Predecessors | Total float |
| --- | --- | --- | --- | --- | --- | --- | --- |
|  | 1 | **Project Management** |  | 2025-01-02 | 2026-09-25 |  |  |
|  | 1 | **Planning & Scheduling** |  | 2025-01-02 | 2026-09-25 |  |  |
| A1000 |  | Develop schedule baseline | 5d | 2025-01-02 | 2025-01-08 |  | 0d |
| A1010 |  | Ongoing schedule updates | 435d | 2025-01-02 | 2026-09-25 | A1000 SS | 0d |
|  | 2 | **Cost Control & Reporting** |  | 2025-01-02 | 2026-09-25 |  |  |
| A1020 |  | Develop cost baseline | 5d | 2025-01-02 | 2025-01-08 | A1000 SS | 430d |
| A1030 |  | Ongoing cost control & reporting | 430d | 2025-01-09 | 2026-09-25 | A1020 | 0d |
|  | 3 | **Risk Management** |  | 2025-01-02 | 2026-09-25 |  |  |
| A1040 |  | Develop risk register | 3d | 2025-01-02 | 2025-01-06 | A1000 SS | 432d |
| A1050 |  | Ongoing risk monitoring | 432d | 2025-01-07 | 2026-09-25 | A1040 | 0d |
|  | 4 | **Contract Administration** |  | 2025-01-02 | 2025-01-23 |  |  |
| A1060 |  | Draft contract templates | 5d | 2025-01-02 | 2025-01-08 | A1000 SS | 105d |
| A1070 |  | Contract negotiation & award | 10d | 2025-01-09 | 2025-01-23 | A1060 | 105d |
|  | 2 | **Design** |  | 2025-01-09 | 2025-05-16 |  |  |
|  | 1 | **Architectural Design** |  | 2025-01-09 | 2025-04-25 |  |  |
|  | 1 | **Conceptual Design** |  | 2025-01-09 | 2025-02-06 |  |  |
| A1080 |  | Conceptual design | 20d | 2025-01-09 | 2025-02-06 | A1000 | 0d |
|  | 2 | **Schematic Design** |  | 2025-02-07 | 2025-03-14 |  |  |
| A1090 |  | Schematic design | 25d | 2025-02-07 | 2025-03-14 | A1080 | 0d |
|  | 3 | **Detailed Design** |  | 2025-03-17 | 2025-04-25 |  |  |
| A1100 |  | Detailed design | 30d | 2025-03-17 | 2025-04-25 | A1090 | 0d |
|  | 2 | **Structural Design** |  | 2025-03-17 | 2025-04-18 |  |  |
| A1110 |  | Structural design | 25d | 2025-03-17 | 2025-04-18 | A1090 | 85d |
|  | 3 | **MEP Design** |  | 2025-03-17 | 2025-04-18 |  |  |
| A1120 |  | MEP design | 25d | 2025-03-17 | 2025-04-18 | A1090 | 175d |
|  | 4 | **Medical Equipment Planning** |  | 2025-04-28 | 2025-05-16 |  |  |
| A1130 |  | Medical equipment planning | 15d | 2025-04-28 | 2025-05-16 | A1100 | 270d |
|  | 3 | **Permits & Regulatory Approval** |  | 2025-02-07 | 2025-06-24 |  |  |
|  | 1 | **Certificate of Need** |  | 2025-02-07 | 2025-04-04 |  |  |
| A1140 |  | Prepare Certificate of Need application | 10d | 2025-02-07 | 2025-02-21 | A1080 | 335d |
| A1150 |  | Certificate of Need approval (wait) | 30d | 2025-02-24 | 2025-04-04 | A1140 | 335d |
|  | 2 | **Building Permits** |  | 2025-04-28 | 2025-06-24 |  |  |
| A1160 |  | Submit building permit application | 10d | 2025-04-28 | 2025-05-09 | A1100 | 0d |
| A1170 |  | Building permit approval (wait) | 30d | 2025-05-12 | 2025-06-24 | A1160 | 0d |
|  | 3 | **Healthcare Facility Licensing** |  | 2025-04-07 | 2025-04-25 |  |  |
| A1180 |  | Healthcare facility licensing application | 15d | 2025-04-07 | 2025-04-25 | A1150 | 335d |
|  | 4 | **Site Preparation & Civil Works** |  | 2025-06-25 | 2025-08-20 |  |  |
|  | 1 | **Site Clearing & Grading** |  | 2025-06-25 | 2025-07-16 |  |  |
| A1190 |  | Site clearing & grading | 15d | 2025-06-25 | 2025-07-16 | A1170, A1070 | 0d |
|  | 2 | **Foundation Work** |  | 2025-07-17 | 2025-08-20 |  |  |
| A1200 |  | Foundation excavation | 10d | 2025-07-17 | 2025-07-30 | A1190 | 0d |
| A1210 |  | Foundation concrete pour | 15d | 2025-07-31 | 2025-08-20 | A1200 | 0d |
|  | 3 | **Utilities Infrastructure (water, power, sewage)** |  | 2025-07-24 | 2025-08-20 |  |  |
| A1220 |  | Utilities infrastructure installation | 20d | 2025-07-24 | 2025-08-20 | A1200 SS+5d | 90d |
|  | 5 | **Structural Construction** |  | 2025-08-21 | 2025-12-31 |  |  |
|  | 1 | **Superstructure (per wing: ED, ICU, Surgical, Inpatient floors)** |  | 2025-08-21 | 2025-11-17 |  |  |
| A1230 |  | Superstructure – ED wing | 40d | 2025-08-21 | 2025-10-17 | A1210, A1110 | 20d |
| A1240 |  | Superstructure – ICU wing | 40d | 2025-08-21 | 2025-10-17 | A1210, A1110 | 20d |
| A1250 |  | Superstructure – Surgical wing | 40d | 2025-08-21 | 2025-10-17 | A1210, A1110 | 20d |
| A1260 |  | Superstructure – Inpatient floors | 60d | 2025-08-21 | 2025-11-17 | A1210, A1110 | 0d |
|  | 2 | **Building Envelope (facade, roofing)** |  | 2025-11-18 | 2025-12-31 |  |  |
| A1270 |  | Building envelope – facade | 30d | 2025-11-18 | 2025-12-31 | A1260, A1230, A1240, A1250 | 0d |
| A1280 |  | Building envelope – roofing | 20d | 2025-11-18 | 2025-12-16 | A1260, A1230, A1240, A1250 | 75d |
|  | 6 | **MEP Installation** |  | 2026-01-02 | 2026-03-09 |  |  |
|  | 1 | **HVAC Systems** |  | 2026-01-02 | 2026-03-09 |  |  |
| A1290 |  | HVAC installation | 45d | 2026-01-02 | 2026-03-09 | A1270, A1120, A1220 | 20d |
|  | 2 | **Electrical Systems** |  | 2026-01-02 | 2026-03-09 |  |  |
| A1300 |  | Electrical installation | 45d | 2026-01-02 | 2026-03-09 | A1270, A1120, A1220 | 0d |
|  | 3 | **Plumbing & Medical Gas Systems** |  | 2026-01-02 | 2026-03-02 |  |  |
| A1310 |  | Plumbing & medical gas systems | 40d | 2026-01-02 | 2026-03-02 | A1270, A1120 | 25d |
|  | 4 | **Fire Protection Systems** |  | 2026-01-02 | 2026-02-13 |  |  |
| A1320 |  | Fire protection systems | 30d | 2026-01-02 | 2026-02-13 | A1270, A1120 | 35d |
|  | 7 | **Smart-Systems Integration** |  | 2026-03-10 | 2026-07-23 |  |  |
|  | 1 | **IoT Patient Monitoring Infrastructure** |  | 2026-04-14 | 2026-05-26 |  |  |
| A1330 |  | IoT patient monitoring installation | 30d | 2026-04-14 | 2026-05-26 | A1360 | 0d |
|  | 2 | **Building Management System (BMS)** |  | 2026-04-14 | 2026-05-26 |  |  |
| A1340 |  | BMS installation | 30d | 2026-04-14 | 2026-05-26 | A1360 | 40d |
|  | 3 | **EMR System Integration** |  | 2026-05-27 | 2026-07-23 |  |  |
| A1350 |  | EMR system integration | 40d | 2026-05-27 | 2026-07-23 | A1330, A1360 | 0d |
|  | 4 | **Network & Cybersecurity Infrastructure** |  | 2026-03-10 | 2026-04-13 |  |  |

| ID | WBS | Task | Duration | Start | Finish | Predecessors | Total float |
| --- | --- | --- | --- | --- | --- | --- | --- |
| A1360 |  | Network & cybersecurity infrastructure | 25d | 2026-03-10 | 2026-04-13 | A1300 | 0d |
|  | 8 | **Interior Finishing & Medical Fit-out** |  | 2026-03-10 | 2026-07-30 |  |  |
|  | 1 | **Interior Finishes (flooring, walls, ceilings)** |  | 2026-03-10 | 2026-05-18 |  |  |
| A1370 |  | Interior finishes | 50d | 2026-03-10 | 2026-05-18 | A1290, A1300, A1310, A1320, A1280 | 20d |
|  | 2 | **Medical Equipment Installation** |  | 2026-05-19 | 2026-07-01 |  |  |
| A1380 |  | Medical equipment installation | 30d | 2026-05-19 | 2026-07-01 | A1370, A1130 | 20d |
|  | 3 | **Furniture & Fixtures** |  | 2026-07-02 | 2026-07-30 |  |  |
| A1390 |  | Furniture & fixtures procurement/install | 20d | 2026-07-02 | 2026-07-30 | A1380 | 20d |
|  | 9 | **Commissioning & Testing** |  | 2026-03-10 | 2026-08-13 |  |  |
|  | 1 | **MEP Systems Testing** |  | 2026-03-10 | 2026-03-30 |  |  |
| A1400 |  | MEP systems testing | 15d | 2026-03-10 | 2026-03-30 | A1290, A1300, A1310, A1320 | 95d |
|  | 2 | **Smart-Systems Testing & Integration Validation** |  | 2026-07-24 | 2026-08-13 |  |  |
| A1410 |  | Smart-systems testing & validation | 15d | 2026-07-24 | 2026-08-13 | A1330, A1340, A1350, A1360 | 0d |
|  | 3 | **Fire & Life Safety Testing** |  | 2026-03-31 | 2026-04-13 |  |  |
| A1420 |  | Fire & life safety testing | 10d | 2026-03-31 | 2026-04-13 | A1320, A1400 | 95d |
|  | 10 | **Accreditation & Handover** |  | 2026-08-14 | 2026-09-25 |  |  |
|  | 1 | **Regulatory Inspection** |  | 2026-08-14 | 2026-08-27 |  |  |
| A1430 |  | Regulatory inspection | 10d | 2026-08-14 | 2026-08-27 | A1390, A1400, A1410, A1420, A1180 | 10d |
|  | 2 | **Staff Training** |  | 2026-08-14 | 2026-09-11 |  |  |
| A1440 |  | Staff training | 20d | 2026-08-14 | 2026-09-11 | A1410 | 0d |
|  | 3 | **Facility Handover & Closeout** |  | 2026-09-14 | 2026-09-25 |  |  |
| A1450 |  | Facility handover & closeout | 10d | 2026-09-14 | 2026-09-25 | A1430, A1440, A1010 FF, A1030 FF, A1050 FF | 0d |

## Version 2 (data date 2025-10-31, saved 2026-09-24, file 03_Final_Project_Schedule_HCB.xer)

Last finish 2026-09-25 → 2026-10-09 (+14d). Complete tasks 0 → 25.

Added:

| ID | Task | Duration | Start | Finish | Predecessors |
| --- | --- | --- | --- | --- | --- |
| A0999 | Project Kickoff / Charter Approved | 0d | 2025-01-02 A | 2025-01-02 A |  |
| A1025 | Cost Baseline Variance Review & Sponsor Decision | 0d | 2025-01-08 A | 2025-01-08 A | A1020 FF |
| A1105 | Design Complete (Detailed Design Approved) | 0d | 2025-04-25 A | 2025-04-25 A | A1100 FF |
| A1175 | Notice to Proceed — Construction Authorized | 0d | 2025-06-24 A | 2025-06-24 A | A1170 FF |
| A1215 | Foundation Complete | 0d | 2025-08-20 A | 2025-08-20 A | A1210 FF |
| A1265 | Structural Topping Out | 0d | 2025-12-02 | 2025-12-02 | A1230 FF, A1240 FF, A1250 FF, A1260 FF |
| A1285 | Building Envelope / Dry-In Complete | 0d | 2026-01-15 | 2026-01-15 | A1270 FF, A1280 FF |
| A1325 | MEP Rough-In Complete | 0d | 2026-03-23 | 2026-03-23 | A1290, A1300, A1310, A1320 |
| A1365 | Smart-Systems Integration Complete | 0d | 2026-08-06 | 2026-08-06 | A1330 FF, A1340 FF, A1350 FF, A1360 FF |
| A1425 | Substantial Completion | 0d | 2026-08-27 | 2026-08-27 | A1400 FF, A1410 FF, A1420 FF |
| A1455 | Project Closeout / Facility Handover Complete | 0d | 2026-10-09 | 2026-10-09 | A1450 FF |

Changed:

| ID | Task | Start | Finish | Complete | Total float | Predecessors | Other |
| --- | --- | --- | --- | --- | --- | --- | --- |
| 1 | **Project Management** |  | 2026-09-25 → 2026-10-09 (+14d) |  |  |  |  |
| 1 | **Planning & Scheduling** |  | 2026-09-25 → 2026-10-09 (+14d) |  |  |  |  |
| A1000 | Develop schedule baseline | 2025-01-02 A | 2025-01-08 A | 0% → 100% | 0d → none | none → A0999 SS |  |
| A1010 | Ongoing schedule updates | 2025-01-02 A | 2026-09-25 → 2026-10-09 (+14d) | 0% → 48% |  |  |  |
| 2 | **Cost Control & Reporting** |  | 2026-09-25 → 2026-10-09 (+14d) |  |  |  |  |
| A1020 | Develop cost baseline | 2025-01-02 A | 2025-01-08 A | 0% → 100% | 430d → none |  |  |
| A1030 | Ongoing cost control & reporting | 2025-01-09 → 2025-01-08 A (-1d) | 2026-09-25 → 2026-10-09 (+14d) | 0% → 47% |  | A1020 → A1020, A1025 |  |
| 3 | **Risk Management** |  | 2026-09-25 → 2026-10-09 (+14d) |  |  |  |  |
| A1040 | Develop risk register | 2025-01-02 A | 2025-01-06 A | 0% → 100% | 432d → none |  |  |
| A1050 | Ongoing risk monitoring | 2025-01-07 → 2025-01-06 A (-1d) | 2026-09-25 → 2026-10-09 (+14d) | 0% → 48% |  |  |  |
| A1060 | Draft contract templates | 2025-01-02 A | 2025-01-08 A | 0% → 100% | 105d → none |  |  |
| A1070 | Contract negotiation & award | 2025-01-09 A | 2025-01-23 A | 0% → 100% | 105d → none |  |  |
| A1080 | Conceptual design | 2025-01-09 A | 2025-02-06 A | 0% → 100% | 0d → none |  |  |
| A1090 | Schematic design | 2025-02-07 A | 2025-03-14 A | 0% → 100% | 0d → none |  |  |
| A1100 | Detailed design | 2025-03-17 A | 2025-04-25 A | 0% → 100% | 0d → none |  |  |
| A1110 | Structural design | 2025-03-17 A | 2025-04-18 A | 0% → 100% | 85d → none |  |  |
| A1120 | MEP design | 2025-03-17 A | 2025-04-18 A | 0% → 100% | 175d → none |  |  |
| A1130 | Medical equipment planning | 2025-04-28 A | 2025-05-16 A | 0% → 100% | 270d → none | A1100 → A1100, A1105 |  |
| A1140 | Prepare Certificate of Need application | 2025-02-07 A | 2025-02-21 A | 0% → 100% | 335d → none |  |  |
| A1150 | Certificate of Need approval (wait) | 2025-02-24 A | 2025-04-04 A | 0% → 100% | 335d → none |  |  |
| A1160 | Submit building permit application | 2025-04-28 A | 2025-05-09 A | 0% → 100% | 0d → none | A1100 → A1100, A1105 |  |
| A1170 | Building permit approval (wait) | 2025-05-12 A | 2025-06-24 A | 0% → 100% | 0d → none |  |  |
| A1180 | Healthcare facility licensing application | 2025-04-07 A | 2025-04-25 A | 0% → 100% | 335d → none |  |  |
| A1190 | Site clearing & grading | 2025-06-25 A | 2025-07-16 A | 0% → 100% | 0d → none | A1170, A1070 → A1170, A1070, A1175 |  |
| A1200 | Foundation excavation | 2025-07-17 A | 2025-07-30 A | 0% → 100% | 0d → none |  |  |
| A1210 | Foundation concrete pour | 2025-07-31 A | 2025-08-20 A | 0% → 100% | 0d → none |  |  |
| A1220 | Utilities infrastructure installation | 2025-07-24 A | 2025-08-20 A | 0% → 100% | 90d → none |  |  |
| 5 | **Structural Construction** |  | 2025-12-31 → 2026-01-15 (+15d) |  |  |  |  |
| 1 | **Superstructure (per wing: ED, ICU, Surgical, Inpatient floors)** |  | 2025-11-17 → 2025-12-02 (+15d) |  |  |  |  |
| A1230 | Superstructure – ED wing | 2025-08-21 A | 2025-10-17 → 2025-11-05 (+19d) | 0% → 90% | 20d → 17d | A1210, A1110 → A1210, A1110, A1215 |  |
| A1240 | Superstructure – ICU wing | 2025-08-21 A | 2025-10-17 → 2025-11-05 (+19d) | 0% → 90% | 20d → 17d | A1210, A1110 → A1210, A1110, A1215 | resources Tower Crane [320 h]; Structural Construction Crew [320 h]; Structural Materials (concrete, rebar, steel) [0.16 LS] → Structural Materials (concrete, rebar, steel) [0.16 LS]; Tower Crane [320 h]; Structural Construction Crew [320 h] |
| A1250 | Superstructure – Surgical wing | 2025-08-21 A | 2025-10-17 → 2025-11-05 (+19d) | 0% → 90% | 20d → 17d | A1210, A1110 → A1210, A1110, A1215 | resources Tower Crane [320 h]; Structural Construction Crew [320 h]; Structural Materials (concrete, rebar, steel) [0.16 LS] → Structural Materials (concrete, rebar, steel) [0.16 LS]; Tower Crane [320 h]; Structural Construction Crew [320 h] |
| A1260 | Superstructure – Inpatient floors | 2025-08-21 A | 2025-11-17 → 2025-12-02 (+15d) | 0% → 65% |  | A1210, A1110 → A1210, A1110, A1215 | resources Tower Crane [480 h]; Structural Construction Crew [480 h]; Structural Materials (concrete, rebar, steel) [0.24 LS] → Structural Materials (concrete, rebar, steel) [0.24 LS]; Tower Crane [480 h]; Structural Construction Crew [480 h] |
| 2 | **Building Envelope (facade, roofing)** | 2025-11-18 → 2025-12-03 (+15d) | 2025-12-31 → 2026-01-15 (+15d) |  |  |  |  |
| A1270 | Building envelope – facade | 2025-11-18 → 2025-12-03 (+15d) | 2025-12-31 → 2026-01-15 (+15d) |  |  | A1260, A1230, A1240, A1250 → A1260, A1230, A1240, A1250, A1265 | resources Finishing Crew [240 h]; Structural Materials (concrete, rebar, steel) [0.12 LS] → Structural Materials (concrete, rebar, steel) [0.12 LS]; Finishing Crew [240 h] |
| A1280 | Building envelope – roofing | 2025-11-18 → 2025-12-03 (+15d) | 2025-12-16 → 2025-12-31 (+15d) |  | 75d → 10d | A1260, A1230, A1240, A1250 → A1260, A1230, A1240, A1250, A1265 | resources Finishing Crew [160 h]; Structural Materials (concrete, rebar, steel) [0.08 LS] → Structural Materials (concrete, rebar, steel) [0.08 LS]; Finishing Crew [160 h] |
| 6 | **MEP Installation** | 2026-01-02 → 2026-01-16 (+14d) | 2026-03-09 → 2026-03-23 (+14d) |  |  |  |  |
| 1 | **HVAC Systems** | 2026-01-02 → 2026-01-16 (+14d) | 2026-03-09 → 2026-03-23 (+14d) |  |  |  |  |
| A1290 | HVAC installation | 2026-01-02 → 2026-01-16 (+14d) | 2026-03-09 → 2026-03-23 (+14d) |  |  | A1270, A1120, A1220 → A1270, A1120, A1220, A1285 | resources MEP Installation Crew [360 h]; MEP Materials & Fixtures [0.28 LS] → MEP Materials & Fixtures [0.28 LS]; MEP Installation Crew [360 h] |
| 2 | **Electrical Systems** | 2026-01-02 → 2026-01-16 (+14d) | 2026-03-09 → 2026-03-23 (+14d) |  |  |  |  |
| A1300 | Electrical installation | 2026-01-02 → 2026-01-16 (+14d) | 2026-03-09 → 2026-03-23 (+14d) |  |  | A1270, A1120, A1220 → A1270, A1120, A1220, A1285 | resources MEP Installation Crew [360 h]; MEP Materials & Fixtures [0.28 LS] → MEP Materials & Fixtures [0.28 LS]; MEP Installation Crew [360 h] |
| 3 | **Plumbing & Medical Gas Systems** | 2026-01-02 → 2026-01-16 (+14d) | 2026-03-02 → 2026-03-16 (+14d) |  |  |  |  |
| A1310 | Plumbing & medical gas systems | 2026-01-02 → 2026-01-16 (+14d) | 2026-03-02 → 2026-03-16 (+14d) |  |  | A1270, A1120 → A1270, A1120, A1285 | resources MEP Installation Crew [320 h]; MEP Materials & Fixtures [0.25 LS] → MEP Materials & Fixtures [0.25 LS]; MEP Installation Crew [320 h] |
| 4 | **Fire Protection Systems** | 2026-01-02 → 2026-01-16 (+14d) | 2026-02-13 → 2026-03-23 (+38d) |  |  |  |  |
| A1320 | Fire protection systems | 2026-01-02 → 2026-01-16 (+14d) | 2026-02-13 → 2026-03-02 (+17d) |  |  | A1270, A1120 → A1270, A1120, A1285 | resources MEP Installation Crew [240 h]; MEP Materials & Fixtures [0.19 LS] → MEP Materials & Fixtures [0.19 LS]; MEP Installation Crew [240 h] |
| 7 | **Smart-Systems Integration** | 2026-03-10 → 2026-03-24 (+14d) | 2026-07-23 → 2026-08-06 (+14d) |  |  |  |  |
| 1 | **IoT Patient Monitoring Infrastructure** | 2026-04-14 → 2026-04-28 (+14d) | 2026-05-26 → 2026-06-09 (+14d) |  |  |  |  |
| A1330 | IoT patient monitoring installation | 2026-04-14 → 2026-04-28 (+14d) | 2026-05-26 → 2026-06-09 (+14d) |  |  |  | resources Smart-Systems Integration Team [240 h]; Smart-Systems Hardware (sensors, servers, network gear) [0.24 LS] → Smart-Systems Hardware (sensors, servers, network gear) [0.24 LS]; Smart-Systems Integration Team [240 h] |
| 2 | **Building Management System (BMS)** | 2026-04-14 → 2026-04-28 (+14d) | 2026-05-26 → 2026-06-09 (+14d) |  |  |  |  |
| A1340 | BMS installation | 2026-04-14 → 2026-04-28 (+14d) | 2026-05-26 → 2026-06-09 (+14d) |  |  |  | resources Smart-Systems Integration Team [240 h]; Smart-Systems Hardware (sensors, servers, network gear) [0.24 LS] → Smart-Systems Hardware (sensors, servers, network gear) [0.24 LS]; Smart-Systems Integration Team [240 h] |
| 3 | **EMR System Integration** | 2026-05-27 → 2026-06-10 (+14d) | 2026-07-23 → 2026-08-06 (+14d) |  |  |  |  |
| A1350 | EMR system integration | 2026-05-27 → 2026-06-10 (+14d) | 2026-07-23 → 2026-08-06 (+14d) |  |  |  |  |
| 4 | **Network & Cybersecurity Infrastructure** | 2026-03-10 → 2026-03-24 (+14d) | 2026-04-13 → 2026-08-06 (+115d) |  |  |  |  |
| A1360 | Network & cybersecurity infrastructure | 2026-03-10 → 2026-03-24 (+14d) | 2026-04-13 → 2026-04-27 (+14d) |  |  |  |  |
| 8 | **Interior Finishing & Medical Fit-out** | 2026-03-10 → 2026-03-24 (+14d) | 2026-07-30 → 2026-08-13 (+14d) |  |  |  |  |
| 1 | **Interior Finishes (flooring, walls, ceilings)** | 2026-03-10 → 2026-03-24 (+14d) | 2026-05-18 → 2026-06-02 (+15d) |  |  |  |  |
| A1370 | Interior finishes | 2026-03-10 → 2026-03-24 (+14d) | 2026-05-18 → 2026-06-02 (+15d) |  |  | A1290, A1300, A1310, A1320, A1280 → A1290, A1300, A1310, A1320, A1280, A1285, A1325 |  |
| 2 | **Medical Equipment Installation** | 2026-05-19 → 2026-06-03 (+15d) | 2026-07-01 → 2026-07-16 (+15d) |  |  |  |  |
| A1380 | Medical equipment installation | 2026-05-19 → 2026-06-03 (+15d) | 2026-07-01 → 2026-07-16 (+15d) |  |  |  |  |
| 3 | **Furniture & Fixtures** | 2026-07-02 → 2026-07-17 (+15d) | 2026-07-30 → 2026-08-13 (+14d) |  |  |  |  |
| A1390 | Furniture & fixtures procurement/install | 2026-07-02 → 2026-07-17 (+15d) | 2026-07-30 → 2026-08-13 (+14d) |  |  |  |  |
| 9 | **Commissioning & Testing** | 2026-03-10 → 2026-03-24 (+14d) | 2026-08-13 → 2026-08-27 (+14d) |  |  |  |  |
| 1 | **MEP Systems Testing** | 2026-03-10 → 2026-03-24 (+14d) | 2026-03-30 → 2026-04-13 (+14d) |  |  |  |  |
| A1400 | MEP systems testing | 2026-03-10 → 2026-03-24 (+14d) | 2026-03-30 → 2026-04-13 (+14d) |  |  | A1290, A1300, A1310, A1320 → A1290, A1300, A1310, A1320, A1325 |  |
| 2 | **Smart-Systems Testing & Integration Validation** | 2026-07-24 → 2026-08-07 (+14d) | 2026-08-13 → 2026-08-27 (+14d) |  |  |  |  |
| A1410 | Smart-systems testing & validation | 2026-07-24 → 2026-08-07 (+14d) | 2026-08-13 → 2026-08-27 (+14d) |  |  | A1330, A1340, A1350, A1360 → A1330, A1340, A1350, A1360, A1365 |  |
| 3 | **Fire & Life Safety Testing** | 2026-03-31 → 2026-04-14 (+14d) | 2026-04-13 → 2026-08-27 (+136d) |  |  |  |  |
| A1420 | Fire & life safety testing | 2026-03-31 → 2026-04-14 (+14d) | 2026-04-13 → 2026-04-27 (+14d) |  |  |  |  |
| 10 | **Accreditation & Handover** | 2026-08-14 → 2026-08-28 (+14d) | 2026-09-25 → 2026-10-09 (+14d) |  |  |  |  |
| 1 | **Regulatory Inspection** | 2026-08-14 → 2026-08-28 (+14d) | 2026-08-27 → 2026-09-11 (+15d) |  |  |  |  |

| ID | Task | Start | Finish | Predecessors |
| --- | --- | --- | --- | --- |
| A1430 | Regulatory inspection | 2026-08-14 → 2026-08-28 (+14d) | 2026-08-27 → 2026-09-11 (+15d) | A1390, A1400, A1410, A1420, A1180 → A1390, A1400, A1410, A1420, A1180, A1425 |
| 2 | **Staff Training** | 2026-08-14 → 2026-08-28 (+14d) | 2026-09-11 → 2026-09-25 (+14d) |  |
| A1440 | Staff training | 2026-08-14 → 2026-08-28 (+14d) | 2026-09-11 → 2026-09-25 (+14d) |  |
| 3 | **Facility Handover & Closeout** | 2026-09-14 → 2026-09-28 (+14d) | 2026-09-25 → 2026-10-09 (+14d) |  |
| A1450 | Facility handover & closeout | 2026-09-14 → 2026-09-28 (+14d) | 2026-09-25 → 2026-10-09 (+14d) |  |
